Schedule from MS Project, 2025-02-05 to 2026-05-06.
Microsoft

## Calendars

- Standard: Mon-Fri 08:00-12:00, 13:00-17:00; Sat-Sun off. Exceptions (off unless hours are given): 2025-02-08 to 2025-02-09 08:00-12:00, 13:00-17:00, 2025-02-15 to 2025-02-16 08:00-12:00, 13:00-17:00, 2025-02-22 to 2025-02-23 08:00-12:00, 13:00-17:00, 2025-03-01 to 2025-03-02 08:00-12:00, 13:00-17:00, 2025-03-08 to 2025-03-09 08:00-12:00, 13:00-17:00, 2025-03-15 to 2025-03-16 08:00-12:00, 13:00-17:00, 2025-03-22 to 2025-03-23 08:00-12:00, 13:00-17:00, 2025-03-29 to 2025-03-30 08:00-12:00, 13:00-17:00, 2025-04-05 to 2025-04-06 08:00-12:00, 13:00-17:00, 2025-04-12 to 2025-04-13 08:00-12:00, 13:00-17:00, 2025-04-19 to 2025-04-20 08:00-12:00, 13:00-17:00, 2025-05-04 08:00-12:00, 13:00-17:00, 2025-05-10 to 2025-05-11 08:00-12:00, 13:00-17:00, 2025-08-30 08:00-12:00, 13:00-17:00, 2025-10-18 08:00-12:00, 13:00-17:00, 2025-12-27 08:00-12:00, 13:00-17:00, 2026-01-24 08:00-12:00, 13:00-17:00, 2026-03-07 08:00-12:00, 13:00-17:00, 2026-04-18 08:00-12:00, 13:00-17:00.

## Resources

| Resource |
| --- |
| Cương |
| Trang |
| Đức |

## Schedule

| ID | WBS | Task | Type | Duration | Start | Finish | Predecessors | Total slack | Free slack | Constraint | Resources | Work | Document |
| --- | --- | --- | --- | --- | --- | --- | --- | --- | --- | --- | --- | --- | --- |
| 1 | 1 | **Chuẩn bị dự án** |  | 17d | 2025-02-05 | 2025-02-21 |  |  |  |  |  | 224h |  |
| 2 | 1.1 | **Khởi tạo dự án** |  | 5d | 2025-02-05 | 2025-02-09 |  |  |  |  |  | 96h |  |
| 3 | 1.1.1 | Xác định mục tiêu dự án |  | 1d | 2025-02-05 | 2025-02-05 |  | 343d | 0d | start no earlier than 2025-02-05 | Cương; Trang; Đức | 24h |  |
| 4 | 1.1.2 | Lập kế hoạch dự án |  | 1d | 2025-02-06 | 2025-02-06 | 3 | 347d | 0d | start no earlier than 2025-02-06 | Đức; Cương; Trang | 24h |  |
| 5 | 1.1.3 | Nghiên cứu các dự án trước |  | 1d | 2025-02-07 | 2025-02-07 | 4 | 347d | 0d | start no earlier than 2025-02-07 | Trang; Đức; Cương | 24h |  |
| 6 | 1.1.4 | Viết tài liệu khởi tạo dự án |  | 1d | 2025-02-08 | 2025-02-08 | 5 | 348d | 0d | start no earlier than 2025-02-08 | Trang | 8h | Tài liệu khởi tạo dự án |
| 7 | 1.1.5 | Tạo mẫu các tài liệu dùng chung |  | 1d | 2025-02-09 | 2025-02-09 | 6 | 352d |  | start no earlier than 2025-02-09 | Đức; Cương | 16h | Các mẫu tài liệu dự án |
| 8 | 1.2 | Xác định phạm vi |  | 2d | 2025-02-10 | 2025-02-11 |  | 350d |  | start no earlier than 2025-02-10 | Trang | 16h | Tài liệu phạm vi dự án |
| 9 | 1.3 | **Xác định và cài đặt môi trường dự án** |  | 3d | 2025-02-12 | 2025-02-14 |  |  |  |  |  | 40h |  |
| 10 | 1.3.1 | Xác định, cài đặt môi trường và các công cụ phát triển |  | 1d | 2025-02-12 | 2025-02-12 |  | 347d | 0d | start no earlier than 2025-02-12 | Đức; Cương; Trang | 24h |  |
| 11 | 1.3.2 | Xác định, cài đặt môi trường sử dụng |  | 1d | 2025-02-13 | 2025-02-13 | 10 | 347d | 0d | start no earlier than 2025-02-13 | Cương | 8h |  |
| 12 | 1.3.3 | Tổng hợp tài liệu môi trường |  | 1d | 2025-02-14 | 2025-02-14 | 11 | 347d |  | start no earlier than 2025-02-14 | Trang | 8h | Tài liệu môi trường dự án |
| 13 | 1.4 | **Xác định và phân tích rủi ro** |  | 5d | 2025-02-15 | 2025-02-19 |  |  |  |  |  | 56h |  |
| 14 | 1.4.1 | Xác định rủi ro |  | 2d | 2025-02-15 | 2025-02-16 |  | 341d | 0d | finish no earlier than 2025-02-16 | Đức | 16h |  |
| 15 | 1.4.2 | Phân tích rủi ro |  | 2d | 2025-02-17 | 2025-02-18 | 14 | 341d | 0d |  | Đức | 16h |  |
| 16 | 1.4.3 | Viết tài liệu rủi ro |  | 1d | 2025-02-19 | 2025-02-19 | 15 | 342d |  | start no earlier than 2025-02-19 | Đức; Trang | 24h | Tài liệu xác định và phân tích rủi ro |
| 17 | 1.5 | Tổng hợp tài liệu chuẩn bị dự án |  | 1d | 2025-02-20 | 2025-02-20 | 13 | 340d | 0d |  | Trang | 8h | Tài liệu chuẩn bị dự án |
| 18 | 1.6 | MKS/ Khởi tạo dự án | milestone | 1d | 2025-02-21 | 2025-02-21 | 17 | 340d |  | start no earlier than 2024-05-08 | Trang | 8h |  |
| 19 | 2 | **Khảo sát** |  | 57d? | 2025-02-22 | 2025-04-19 |  |  |  |  |  | 472h |  |
| 20 | 2.1 | **Khảo sát nghiệp vụ quản lý đăng ký/đăng nhập** |  | 7d | 2025-02-22 | 2025-02-28 |  |  |  |  |  | 56h |  |
| 21 | 2.1.1 | Lập bảng câu hỏi |  | 1d | 2025-02-22 | 2025-02-22 |  | 56d | 0d |  | Cương | 8h |  |
| 22 | 2.1.2 | Khảo sát giáo viên, giảng viên chuyên môn qua form bảng hỏi, trực tiếp |  | 5d | 2025-02-23 | 2025-02-27 | 21 | 333d | 0d | start no earlier than 2025-02-23 | Cương | 40h |  |
| 23 | 2.1.3 | Tổng hợp tài liệu về khảo sát |  | 1d | 2025-02-28 | 2025-02-28 | 22 | 333d |  | start no earlier than 2025-02-28 | Cương | 8h | Tài liệu khảo sát nghiệp vụ quản lý đăng ký/đăng nhập |
| 24 | 2.2 | **Khảo sát nghiệp vụ quản lý khóa học** |  | 7d | 2025-03-01 | 2025-03-07 |  |  |  |  |  | 56h |  |
| 25 | 2.2.1 | Lập bảng câu hỏi |  | 1d | 2025-03-01 | 2025-03-01 |  | 49d | 0d |  | Đức | 8h |  |
| 26 | 2.2.2 | Khảo sát các cơ sở giảng dạy qua form bảng hỏi, trực tiếp |  | 5d | 2025-03-02 | 2025-03-06 | 25 | 326d | 0d | start no earlier than 2025-03-02 | Đức | 40h |  |
| 27 | 2.2.3 | Tổng hợp tài liệu về khảo sát |  | 1d | 2025-03-07 | 2025-03-07 | 26 | 326d |  | start no earlier than 2025-03-07 | Đức | 8h | Tài liệu khảo sát nghiệp vụ quản lý khóa học |

| ID | WBS | Task | Type | Duration | Start | Finish | Predecessors | Total slack | Free slack | Constraint | Resources | Work | Document |
| --- | --- | --- | --- | --- | --- | --- | --- | --- | --- | --- | --- | --- | --- |
| 28 | 2.3 | **Khảo sát nghiệp vụ quản lý học viên** |  | 7d | 2025-03-08 | 2025-03-14 |  |  |  |  |  | 56h |  |
| 29 | 2.3.1 | Lập bảng câu hỏi |  | 1d | 2025-03-08 | 2025-03-08 |  | 42d | 0d |  | Trang | 8h |  |
| 30 | 2.3.2 | Khảo sát các cơ sở giảng dạy qua form bảng hỏi, trực tiếp |  | 5d | 2025-03-09 | 2025-03-13 | 29 | 319d | 0d | start no earlier than 2025-03-09 | Trang | 40h |  |
| 31 | 2.3.3 | Tổng hợp tài liệu về khảo sát |  | 1d | 2025-03-14 | 2025-03-14 | 30 | 319d |  | start no earlier than 2025-03-14 | Trang | 8h | Tài liệu khảo sát nghiệp vụ quản lý học viên |
| 32 | 2.4 | **Khảo sát nghiệp vụ quản lý giảng viên** |  | 7d? | 2025-03-15 | 2025-03-21 |  |  |  |  |  | 56h |  |
| 33 | 2.4.1 | Lập bảng câu hỏi |  | 1d | 2025-03-15 | 2025-03-15 |  | 35d | 0d |  | Cương | 8h |  |
| 34 | 2.4.2 | Khảo sát hiệu trưởng trường học qua form bảng hỏi, trực tiếp |  | 5d | 2025-03-16 | 2025-03-20 | 33 | 312d | 0d | start no earlier than 2025-03-16 | Cương | 40h |  |
| 35 | 2.4.3 | Tổng hợp tài liệu về khảo sát |  | 1d | 2025-03-21 | 2025-03-21 | 34 | 312d |  | start no earlier than 2025-03-21 | Cương | 8h | Tài liệu khảo sát nghiệp vụ quản lý giảng viên |
| 36 | 2.5 | **Khảo sát nghiệp vụ quản lý tài liệu học tập** |  | 7d? | 2025-03-22 | 2025-03-28 |  |  |  |  |  | 56h |  |
| 37 | 2.5.1 | Lập bảng câu hỏi |  | 1d | 2025-03-22 | 2025-03-22 |  | 28d | 0d |  | Đức | 8h |  |
| 38 | 2.5.2 | Khảo sát thực tế quy trình quản lý tài liệu học tập qua form bảng hỏi, trực tiếp |  | 5d | 2025-03-23 | 2025-03-27 | 37 | 305d | 0d | start no earlier than 2025-03-23 | Đức | 40h |  |
| 39 | 2.5.3 | Tổng hợp tài liệu về khảo sát |  | 1d | 2025-03-28 | 2025-03-28 | 38 | 305d |  | start no earlier than 2025-03-28 | Đức | 8h | Tài liệu khảo sát nghiệp vụ quản lý tài liệu học tập |
| 40 | 2.6 | **Khảo sát nghiệp vụ quản lý bài tập và kiểm tra** |  | 7d? | 2025-03-29 | 2025-04-04 |  |  |  |  |  | 56h |  |
| 41 | 2.6.1 | Lập bảng biểu câu hỏi |  | 1d | 2025-03-29 | 2025-03-29 |  | 21d | 0d |  | Trang | 8h |  |
| 42 | 2.6.2 | Khảo sát quy trình quản lý bài tập và kiểm tra học viên qua form bảng hỏi, trực tiếp |  | 5d | 2025-03-30 | 2025-04-03 | 41 | 298d | 0d | start no earlier than 2025-03-30 | Trang | 40h |  |
| 43 | 2.6.3 | Tổng hợp tài liệu về khảo sát |  | 1d | 2025-04-04 | 2025-04-04 | 42 | 298d |  | start no earlier than 2025-04-04 | Trang | 8h | Tài liệu khảo sát ngjiepej vụ quản lý bài tập, kiểm tra |
| 44 | 2.7 | **Khảo sát nghiệp vụ báo cáo và phân tích** |  | 7d? | 2025-04-05 | 2025-04-11 |  |  |  |  |  | 56h |  |
| 45 | 2.7.1 | Lập bảng biểu câu hỏi |  | 1d | 2025-04-05 | 2025-04-05 |  | 14d | 0d |  | Cương | 8h |  |
| 46 | 2.7.2 | Khảo sát quy trình lập báo cáo phân tích qua form bảng hỏi, trực tiếp |  | 5d | 2025-04-06 | 2025-04-10 | 45 | 291d | 0d | start no earlier than 2025-04-06 | Cương | 40h |  |
| 47 | 2.7.3 | Tổng hợp tài liệu về khảo sát |  | 1d | 2025-04-11 | 2025-04-11 | 46 | 291d |  | start no earlier than 2025-04-11 | Cương | 8h | Tài liệu khảo sát nghiệp vụ báo cáo, phân tích |
| 48 | 2.8 | **Khảo sát đánh giá và phản hồi học viên** |  | 7d? | 2025-04-12 | 2025-04-18 |  |  |  |  |  | 56h |  |
| 49 | 2.8.1 | Lập bảng câu hỏi |  | 1d | 2025-04-12 | 2025-04-12 |  | 7d | 0d |  | Đức | 8h |  |
| 50 | 2.8.2 | Khảo sát quy trình đánh giá và phản hồi học viên qua form bảng hỏi, trực tiếp |  | 5d | 2025-04-13 | 2025-04-17 | 49 | 284d | 0d | start no earlier than 2025-04-13 | Đức | 40h |  |
| 51 | 2.8.3 | Tổng hợp tài liệu khảo sát |  | 1d | 2025-04-18 | 2025-04-18 | 50 | 284d |  | start no earlier than 2025-04-18 | Đức | 8h | Tài liệu khảo sát đánh giá và phản hồi học viên |
| 52 | 2.9 | MKS / Xác định yêu cầu hệ thống | milestone | 1d | 2025-04-19 | 2025-04-19 | 48 | 283d |  | start no earlier than 2025-04-19 | Đức; Cương; Trang | 24h |  |

| ID | WBS | Task | Duration | Start | Finish | Predecessors | Total slack | Free slack | Constraint | Resources | Work | Document |
| --- | --- | --- | --- | --- | --- | --- | --- | --- | --- | --- | --- | --- |
| 53 | 3 | **Phân tích** | 51d? | 2025-04-20 | 2025-06-24 | 19 |  |  |  |  | 4312h |  |
| 54 | 3.1 | **Mô hình hóa quy trình nghiệp vụ** | 9d | 2025-04-20 | 2025-04-30 |  |  |  |  |  | 520h |  |
| 55 | 3.1.1 | Mô hình hóa quy trình nghiệp vụ quản lý đăng ký/đăng nhập | 4d | 2025-04-20 | 2025-04-23 |  | 279d |  | start no earlier than 2025-04-20 | Cương; Đức | 64h |  |
| 56 | 3.1.2 | Mô hình hóa quy trình nghiệp vụ quản lý khóa học | 4d | 2025-04-20 | 2025-04-23 |  | 279d |  |  | Cương; Đức | 64h |  |
| 57 | 3.1.3 | Mô hình hóa quy trình nghiệp vụ quản lý học viên | 4d | 2025-04-20 | 2025-04-23 |  | 279d |  |  | Đức; Cương | 64h |  |
| 58 | 3.1.4 | Mô hình hóa quy trình nghiệp vụ quản lý giảng viên | 4d | 2025-04-20 | 2025-04-23 |  | 278d | 4d |  | Đức; Cương | 64h |  |
| 59 | 3.1.5 | Mô hình hóa quy trình quản lý tài liệu học tập | 4d | 2025-04-24 | 2025-04-29 |  | 275d |  | start no earlier than 2025-04-24 | Cương; Trang | 64h |  |
| 60 | 3.1.6 | Mô hình hóa quy trình quản lý bài tập và kiểm tra | 4d | 2025-04-24 | 2025-04-29 |  | 275d |  | start no earlier than 2025-04-24 | Cương; Trang | 64h |  |
| 61 | 3.1.7 | Mô hình hóa quy trình báo cáo và phân tích | 4d | 2025-04-24 | 2025-04-29 |  | 275d |  | start no earlier than 2025-04-24 | Cương; Trang | 64h |  |
| 62 | 3.1.8 | Mô hình hóa quy trình đánh giá và phản hồi học viên | 4d | 2025-04-24 | 2025-04-29 |  | 275d |  | start no earlier than 2025-04-24 | Cương; Trang | 64h |  |
| 63 | 3.1.9 | Tổng hợp tài liệu mô hình hóa quy trình nghiệp vụ | 1d | 2025-04-30 | 2025-04-30 | 58 | 274d |  | start no earlier than 2025-04-30 | Trang | 8h | Tài liệu mô hình hóa quy trình nghiệp vụ |
| 64 | 3.2 | **Liệt kê các chức năng chính và xây dựng sơ đồ tổng quan các chức năng** | 17d | 2025-05-01 | 2025-05-20 |  |  |  |  |  | 1568h |  |
| 65 | 3.2.1 | Nghiệp vụ quản lý đăng ký/đăng nhập | 9d | 2025-05-01 | 2025-05-10 |  | 265d |  | start no earlier than 2025-05-01 | Cương; Đức; Trang | 216h |  |
| 66 | 3.2.2 | Nghiệp vụ quản lý khóa học | 8d | 2025-05-01 | 2025-05-09 |  | 266d |  |  | Đức; Cương; Trang | 192h |  |
| 67 | 3.2.3 | Nghiệp vụ quản lý học viên | 8d | 2025-05-01 | 2025-05-09 |  | 266d |  |  | Cương; Đức; Trang | 192h |  |
| 68 | 3.2.4 | Nghiệp vụ quản lý giảng viên | 8d | 2025-05-01 | 2025-05-09 |  | 266d |  |  | Đức; Cương; Trang | 192h |  |
| 69 | 3.2.5 | Nghiệp vụ quản lý tài liệu học tập | 8d | 2025-05-06 | 2025-05-13 |  | 262d |  | start no earlier than 2025-05-06 | Đức; Trang; Cương | 192h |  |
| 70 | 3.2.6 | Nghiệp vụ quản lý bài tập và kiểm tra | 8d | 2025-05-06 | 2025-05-13 |  | 262d |  | start no earlier than 2025-05-06 | Đức; Trang; Cương | 192h |  |
| 71 | 3.2.7 | Nghiệp vụ lập báo cáo và phân tích | 8d | 2025-05-06 | 2025-05-13 |  | 262d |  | start no earlier than 2025-05-06 | Đức; Trang; Cương | 192h |  |
| 72 | 3.2.8 | Nghiệp vụ đánh giá và phản hồi học viên | 8d | 2025-05-06 | 2025-05-13 |  | 262d |  | start no earlier than 2025-05-06 | Đức; Trang; Cương | 192h |  |
| 73 | 3.2.9 | Tổng hợp tài liệu các chức năng chính | 1d | 2025-05-14 | 2025-05-14 |  | 261d |  | start no earlier than 2025-05-14 | Trang | 8h | tài liệu mô tả chức năng chính |
| 74 | 3.3 | **Mô tả các tác nhân, thực thể, các chức năng chính** | 9d | 2025-05-21 | 2025-06-02 |  |  |  |  |  | 648h |  |
| 75 | 3.3.1 | Nghiệp vụ quản lý đăng ký/đăng nhập | 4d | 2025-05-21 | 2025-05-26 |  | 253d |  | start no earlier than 2025-05-21 | Đức; Cương | 64h |  |
| 76 | 3.3.2 | Nghiệp vụ quản lý khóa học | 4d | 2025-05-21 | 2025-05-26 |  | 253d |  |  | Đức; Cương | 64h |  |
| 77 | 3.3.3 | Nghiệp vụ quản lý học viên | 4d | 2025-05-21 | 2025-05-26 |  | 253d |  |  | Cương; Đức | 64h |  |
| 78 | 3.3.4 | Nghiệp vụ quản lý giảng viên | 4d | 2025-05-21 | 2025-05-26 |  | 253d |  |  | Cương; Đức | 64h |  |
| 79 | 3.3.5 | Nghiệp vụ quản lý tài liệu học tập | 4d | 2025-05-27 | 2025-05-30 |  | 249d |  | start no earlier than 2025-05-27 | Cương; Trang; Đức | 96h |  |
| 80 | 3.3.6 | Nghiệp vụ quản lý bài tập và kiểm tra | 4d | 2025-05-27 | 2025-05-30 |  | 249d |  | start no earlier than 2025-05-27 | Đức; Cương; Trang | 96h |  |
| 81 | 3.3.7 | Nghiệp vụ lập báo cáo và phân tích | 4d | 2025-05-27 | 2025-05-30 |  | 249d |  | start no earlier than 2025-05-27 | Đức; Cương; Trang | 96h |  |
| 82 | 3.3.8 | Nghiệp vụ đánh giá và phản hồi | 4d | 2025-05-27 | 2025-05-30 |  | 249d |  | start no earlier than 2025-05-27 | Đức; Cương; Trang | 96h |  |
| 83 | 3.3.9 | Tổng hợp tài liệu mô tả các tác nhân, thực thể, các chức năng chính | 1d | 2025-06-02 | 2025-06-02 |  | 248d |  | start no earlier than 2025-05-31 | Trang | 8h | Tài liệu mô tả các tác nhân, thực thể, các chức năng chính |

| ID | WBS | Task | Type | Duration | Start | Finish | Total slack | Constraint | Resources | Work | Document |
| --- | --- | --- | --- | --- | --- | --- | --- | --- | --- | --- | --- |
| 84 | 3.4 | **Đặc tả các chức năng chính của hệ thống và viết tài liệu đặc tả** |  | 16d? | 2025-06-03 | 2025-06-24 |  |  |  | 1536h |  |
| 85 | 3.4.1 | Nghiệp vụ quản lý đăng ký/đăng nhập |  | 8d | 2025-06-03 | 2025-06-12 | 240d | start no earlier than 2025-06-03 | Đức; Cương; Trang | 192h |  |
| 86 | 3.4.2 | Nghiệp vụ quản lý khóa học |  | 8d | 2025-06-03 | 2025-06-12 | 240d |  | Đức; Cương; Trang | 192h |  |
| 87 | 3.4.3 | Nghiệp vụ quản lý học viên |  | 8d | 2025-06-03 | 2025-06-12 | 240d |  | Đức; Cương; Trang | 192h |  |
| 88 | 3.4.4 | Nghiệp vụ quản lý giảng viên |  | 8d | 2025-06-03 | 2025-06-12 | 240d |  | Đức; Cương; Trang | 192h |  |
| 89 | 3.4.5 | Nghiệp vụ quản lý tài liệu học tập |  | 8d | 2025-06-13 | 2025-06-24 | 232d | start no earlier than 2025-06-13 | Đức; Cương; Trang | 192h |  |
| 90 | 3.4.6 | Nghiệp vụ quản lý bài tập và kiểm tra |  | 8d | 2025-06-13 | 2025-06-24 | 232d | start no earlier than 2025-06-13 | Đức; Cương; Trang | 192h |  |
| 91 | 3.4.7 | Nghiệp vụ lập báo cáo và phân tích |  | 8d | 2025-06-13 | 2025-06-24 | 232d | start no earlier than 2025-06-13 | Đức; Cương; Trang | 192h |  |
| 92 | 3.4.8 | Nghiệp vụ đánh gái và phản hồi học viên |  | 8d | 2025-06-13 | 2025-06-24 | 232d | start no earlier than 2025-06-13 | Đức; Cương; Trang | 192h |  |
| 93 | 3.4.9 | Lựa chọn kiến trúc hệ thống, cơ sở dữ liệu |  | 1d? | 2025-06-03 | 2025-06-03 | 247d |  |  |  |  |
| 94 | 3.5 | Tổng hợp tài liệu phân tích |  | 5d | 2025-04-24 | 2025-04-30 | 274d |  | Trang | 40h | tài liệu phân tích |
| 95 | 3.6 | MKS / Phân tích | milestone | 4d | 2025-04-20 | 2025-04-23 | 279d |  |  |  |  |
| 96 | 4 | **Thiết kế hệ thống** |  | 49d? | 2025-06-25 | 2025-08-30 |  |  |  | 2936h |  |
| 97 | 4.1 | **Thiết kế sơ đồ lớp phân tích cho các chức năng** |  | 14d | 2025-06-25 | 2025-07-14 |  |  |  | 896h |  |
| 98 | 4.1.1 | Nghiệp vụ quản lý đăng ký/đăng nhập |  | 14d | 2025-06-25 | 2025-07-14 | 218d |  | Đức | 112h |  |
| 99 | 4.1.2 | Nghiệp vụ quản lý khóa học |  | 14d | 2025-06-25 | 2025-07-14 | 218d |  | Đức | 112h |  |
| 100 | 4.1.3 | Nghiệp vụ quản lý học viên |  | 14d | 2025-06-25 | 2025-07-14 | 218d |  | Đức | 112h |  |
| 101 | 4.1.4 | Nghiệp vụ quản lý giảng viên |  | 14d | 2025-06-25 | 2025-07-14 | 218d |  | Đức | 112h |  |
| 102 | 4.1.5 | Nghiệp vụ quản lý tài liệu học tập |  | 14d | 2025-06-25 | 2025-07-14 | 218d |  | Đức | 112h |  |
| 103 | 4.1.6 | Nghiệp vụ quản lý bài tập và kiểm tra |  | 14d | 2025-06-25 | 2025-07-14 | 218d |  | Đức | 112h |  |
| 104 | 4.1.7 | Nghiệp vụ lập báo cáo và phân tích |  | 14d | 2025-06-25 | 2025-07-14 | 218d |  | Đức | 112h |  |
| 105 | 4.1.8 | Nghiệp vụ đánh giá và phản hồi học viên |  | 14d | 2025-06-25 | 2025-07-14 | 218d |  | Đức | 112h |  |
| 106 | 4.2 | **Thiết kế sơ đồ tuần tự cho các chức năng** |  | 14d? | 2025-07-16 | 2025-08-04 |  |  |  | 896h |  |
| 107 | 4.2.1 | Nghiệp vụ quản lý đăng ký/đăng nhập |  | 14d | 2025-07-16 | 2025-08-04 | 203d |  | Cương | 112h |  |
| 108 | 4.2.2 | Nghiệp vụ quản lý khóa học |  | 14d | 2025-07-16 | 2025-08-04 | 203d |  | Cương | 112h |  |
| 109 | 4.2.3 | Nghiệp vụ quản lý học viên |  | 14d | 2025-07-16 | 2025-08-04 | 203d |  | Cương | 112h |  |
| 110 | 4.2.4 | Nghiệp vụ quản lý giảng viên |  | 14d | 2025-07-16 | 2025-08-04 | 203d |  | Cương | 112h |  |
| 111 | 4.2.5 | Nghiệp vụ quản lý tài liệu học tập |  | 14d | 2025-07-16 | 2025-08-04 | 203d |  | Cương | 112h |  |
| 112 | 4.2.6 | Nghiệp vụ quản lý bài tập và kiểm tra |  | 14d | 2025-07-16 | 2025-08-04 | 203d |  | Cương | 112h |  |
| 113 | 4.2.7 | Nghiệp vụ lập báo cáo và phân tích |  | 14d | 2025-07-16 | 2025-08-04 | 203d |  | Cương | 112h |  |
| 114 | 4.2.8 | Nghiệp vụ đánh giá và phản hồi học viên |  | 14d | 2025-07-16 | 2025-08-04 | 203d |  | Cương | 112h |  |
| 115 | 4.3 | Thiết kế sơ đồ mối quan hệ thực thể (ERD) | manual | 4d | 2025-08-05 | 2025-08-08 |  |  | Đức; Cương; Trang | 96h |  |

| ID | WBS | Task | Type | Duration | Start | Finish | Predecessors | Total slack | Free slack | Constraint | Resources | Work | Document |
| --- | --- | --- | --- | --- | --- | --- | --- | --- | --- | --- | --- | --- | --- |
| 116 | 4.4 | **Thiết kế giao diện** |  | 16d? | 2025-08-08 | 2025-08-29 |  |  |  |  |  | 1024h |  |
| 117 | 4.4.1 | Nghiệp vụ quản lý đăng ký/ đăng nhập |  | 16d | 2025-08-08 | 2025-08-29 |  | 184d |  |  | Trang | 128h |  |
| 118 | 4.4.2 | Nghiệp vụ quản lý khóa học |  | 16d | 2025-08-08 | 2025-08-29 |  | 184d |  |  | Trang | 128h |  |
| 119 | 4.4.3 | Nghiệp vụ quản lý học viên |  | 16d | 2025-08-08 | 2025-08-29 |  | 184d |  |  | Trang | 128h |  |
| 120 | 4.4.4 | Nghiệp vụ quản lý giảng viên |  | 16d | 2025-08-08 | 2025-08-29 |  | 184d |  |  | Trang | 128h |  |
| 121 | 4.4.5 | Nghiệp vụ quản lý tài liệu học tập |  | 16d | 2025-08-08 | 2025-08-29 |  | 184d |  |  | Trang | 128h |  |
| 122 | 4.4.6 | Nghiệp vụ quản lý bài tập và kiểm tra |  | 16d | 2025-08-08 | 2025-08-29 |  | 184d |  |  | Trang | 128h |  |
| 123 | 4.4.7 | Nghiệp vụ lập báo cáo và phân tích |  | 16d | 2025-08-08 | 2025-08-29 |  | 184d |  |  | Trang | 128h |  |
| 124 | 4.4.8 | Nghiệp vụ đánh giá và phản hồi học viên |  | 16d | 2025-08-08 | 2025-08-29 |  | 184d |  |  | Trang | 128h |  |
| 125 | 4.5 | MKS / Thiết kế hệ thống | milestone | 1d | 2025-08-30 | 2025-08-30 |  | 183d |  | start no earlier than 2025-08-30 | Đức; Cương; Trang | 24h |  |
| 126 | 5 | **Xây dựng hệ thống** |  | 139d? | 2025-08-30 | 2026-03-06 |  |  |  |  |  | 2080h |  |
| 127 | 5.1 | Xây dựng cơ sở dữ liệu | manual | 12d | 2025-08-30 | 2025-09-15 |  |  |  |  | Đức | 96h |  |
| 128 | 5.2 | **Lập trình back-end** |  | 68d | 2025-09-16 | 2025-12-17 |  |  |  |  |  | 1032h |  |
| 129 | 5.2.1 | Nghiệp vụ quản lý đăng ký/đăng nhập |  | 8d | 2025-09-16 | 2025-09-25 |  | 104d | 0d | start no earlier than 2025-09-16 | Cương; Trang | 128h |  |
| 130 | 5.2.2 | Nghiệp vụ quản lý khóa học |  | 8d | 2025-09-26 | 2025-10-07 | 129 | 104d | 0d | start no earlier than 2024-09-27 | Cương; Trang | 128h |  |
| 131 | 5.2.3 | Nghiệp vụ quản lý học viên |  | 8d | 2025-10-08 | 2025-10-17 | 130 | 104d | 0d | start no earlier than 2024-10-09 | Trang; Cương | 128h |  |
| 132 | 5.2.4 | Nghiệp vụ quản lý giảng viên |  | 8d | 2025-10-18 | 2025-10-31 | 131 | 104d | 0d | start no earlier than 2025-10-18 | Cương; Trang | 128h |  |
| 133 | 5.2.5 | Nghiệp vụ quản lý tài liệu học tập |  | 8d | 2025-11-03 | 2025-11-12 | 132 | 104d | 0d |  | Đức; Cương | 128h |  |
| 134 | 5.2.6 | Nghiệp vụ quản lý bài tập và kiểm tra |  | 8d | 2025-11-13 | 2025-11-24 | 133 | 104d | 0d | start no earlier than 2024-11-14 | Đức; Cương | 128h |  |
| 135 | 5.2.7 | Nghiệp vụ lập báo cáo và phân tích |  | 8d | 2025-11-25 | 2025-12-04 | 134 | 104d | 0d | start no earlier than 2024-11-26 | Đức; Cương | 128h |  |
| 136 | 5.2.8 | Nghiệp vụ đánh giá và phản hồi học viên |  | 8d | 2025-12-05 | 2025-12-16 | 135 | 104d | 0d | start no earlier than 2024-12-06 | Đức; Cương | 128h |  |
| 137 | 5.2.9 | Tổng hợp tài liệu xây dựng back-end |  | 1d | 2025-12-17 | 2025-12-17 | 136 | 104d |  | start no earlier than 2024-12-17 | Trang | 8h | tài liệu xây dựng back-end |
| 138 | 5.3 | **Lập trình front-end** |  | 57d? | 2025-12-18 | 2026-03-04 |  |  |  |  |  | 904h |  |
| 139 | 5.3.1 | Nghiệp vụ quản lý đăng ký/đăng nhập |  | 7d | 2025-12-18 | 2025-12-26 |  | 47d | 0d | start no earlier than 2025-12-18 | Cương; Đức | 112h |  |
| 140 | 5.3.2 | Nghiệp vụ quản lý khóa học |  | 7d | 2025-12-27 | 2026-01-05 | 139 | 47d | 0d | start no earlier than 2025-12-27 | Đức; Cương | 112h |  |
| 141 | 5.3.3 | Nghiệp vụ quản lý học viên |  | 7d | 2026-01-06 | 2026-01-14 | 140 | 47d | 0d | start no earlier than 2024-10-10 | Đức; Cương | 112h |  |
| 142 | 5.3.4 | Nghiệp vụ quản lý giảng viên |  | 7d | 2026-01-15 | 2026-01-23 | 141 | 47d | 0d | start no earlier than 2024-10-19 | Cương; Đức | 112h |  |
| 143 | 5.3.5 | Nghiệp vụ quản lý học tập |  | 7d | 2026-01-24 | 2026-02-02 | 142 | 47d | 0d | start no earlier than 2026-01-24 | Trang; Đức | 112h |  |
| 144 | 5.3.6 | Nghiệp vụ quản lý bài tập và kiểm tra |  | 7d | 2026-02-03 | 2026-02-11 | 143 | 47d | 0d | start no earlier than 2024-11-07 | Đức; Trang | 112h |  |
| 145 | 5.3.7 | Nghiệp vụ lập báo cáo và phân tích |  | 7d | 2026-02-12 | 2026-02-20 | 144 | 47d | 0d | start no earlier than 2026-02-12 | Đức; Trang | 112h |  |
| 146 | 5.3.8 | Nghiệp vụ đánh giá và phản hồi học viên |  | 7d | 2026-02-23 | 2026-03-03 | 145 | 47d | 0d | start no earlier than 2026-02-23 | Đức; Trang | 112h |  |
| 147 | 5.3.9 | Tổng hợp tài liệu xây dựng front-end |  | 1d | 2026-03-04 | 2026-03-04 | 146 | 47d |  | start no earlier than 2026-03-04 | Trang | 8h | tài liệu xây dựng front-end |
| 148 | 5.4 | Tổng hợp và viết tài liệu xây dựng hệ thống |  | 1d | 2026-03-05 | 2026-03-05 | 138 | 45d | 0d | start no earlier than 2026-03-05 | Đức; Cương; Trang | 24h | tài liệu xây dựng hệ thống |
| 149 | 5.5 | MKS/Xây dựng hệ thống | milestone | 1d | 2026-03-06 | 2026-03-06 | 148 | 45d |  | start no earlier than 2026-03-06 | Cương; Đức; Trang | 24h |  |

| ID | WBS | Task | Type | Duration | Start | Finish | Predecessors | Total slack | Free slack | Constraint | Resources | Work | Document |
| --- | --- | --- | --- | --- | --- | --- | --- | --- | --- | --- | --- | --- | --- |
| 150 | 6 | **Kiểm thử hệ thống** |  | 31d | 2026-03-07 | 2026-04-17 |  |  |  |  |  | 680h |  |
| 151 | 6.1 | Lên kế hoạch kiểm thử |  | 2d | 2026-03-07 | 2026-03-09 |  | 14d | 0d | start no earlier than 2026-03-07 | Cương | 16h |  |
| 152 | 6.2 | Chuẩn bị môi trường kiểm thử |  | 2d | 2026-03-10 | 2026-03-11 | 151 | 14d | 0d | start no earlier than 2026-03-10 | Đức | 16h |  |
| 153 | 6.3 | Thực hiện kiểm thử các chức năng |  | 15d | 2026-03-12 | 2026-04-01 | 152 | 14d | 0d |  | Cương; Đức; Trang | 360h |  |
| 154 | 6.4 | Tổng hợp kết quả kiểm thử |  | 1d | 2026-04-02 | 2026-04-02 | 153 | 14d | 0d | start no earlier than 2026-04-02 | Cương; Đức; Trang | 24h | tài liệu tổng hợp kết quả kiểm thử |
| 155 | 6.5 | Sửa các lỗi được phát hiện |  | 9d | 2026-04-03 | 2026-04-15 | 154 | 14d | 0d | start no earlier than 2026-04-03 | Cương; Đức; Trang | 216h |  |
| 156 | 6.6 | MKS/Kiểm thử hệ thống | milestone | 2d | 2026-04-16 | 2026-04-17 | 155 | 14d |  |  | Trang; Đức; Cương | 48h |  |
| 157 | 7 | **Triển khai hệ thống** |  | 14d | 2026-04-18 | 2026-05-06 | 3 |  |  |  |  | 296h |  |
| 158 | 7.1 | Viết tài liệu triển khai hệ thống |  | 2d | 2026-04-18 | 2026-04-20 |  | 1d | 0d | start no earlier than 2026-04-18 | Đức; Cương; Trang | 48h | tài liệu triển khai hệ thống |
| 159 | 7.2 | Hướng dẫn sử dụng hệ thống và viết tài liệu hướng dẫn cho người dùng |  | 7d | 2026-04-21 | 2026-04-29 | 158 | 1d | 0d |  | Đức; Cương; Trang | 168h |  |
| 160 | 7.3 | Triển khai hệ thống |  | 3d | 2026-04-30 | 2026-05-04 | 159 | 1d |  | start no earlier than 2026-04-28 | Đức; Cương | 32h |  |
| 161 | 7.4 | Nghiệm thu dự án |  | 1d | 2026-05-05 | 2026-05-05 |  | 1d |  | start no earlier than 2026-05-05 | Đức; Cương; Trang | 24h |  |
| 162 | 7.5 | MKS/Tổng kết và kết thúc dự án | milestone | 1d | 2026-05-06 | 2026-05-06 | 160 | 0d |  | start no earlier than 2026-05-06 | Đức; Cương; Trang | 24h |  |
